# 星火G3.5 1A

Schedule from a web Gantt chart, 2025-08-08 to 2026-01-06.
Every day is a working day

## Schedule

| ID | WBS | Task | Duration | Start | Finish | Predecessors | Complete | Status |
| --- | --- | --- | --- | --- | --- | --- | --- | --- |
| 2 | 1 | Layout ready | 4d | 2025-08-08 | 2025-08-11 |  | 100% | done |
| 3 | 2 | Mask in & W/S | 28d | 2025-08-12 | 2025-09-08 | 2 | 100% | done |
| 4 | 3 | 1st device lot F/O & CP | 20d | 2025-09-09 | 2025-09-28 | 3 | 100% | done |
| 5 | 4 | **盲封 验证动态性能&RE (动态已fail)** | 87d | 2025-09-29 | 2025-12-24 |  | 29% |  |
| 6 | 4.1 | Assembly | 25d | 2025-09-29 | 2025-10-23 | 4 | 100% | done |
| 7 | 4.2 | Package ready | 2d | 2025-10-24 | 2025-10-25 | 6 | 100% | done |
| 8 | 4.3 | **RE 验证** | 60d | 2025-10-26 | 2025-12-24 | 7 |  |  |
| 9 | 4.3.1 | RE 168H & Samples ready | 15d | 2025-10-26 | 2025-11-09 |  |  | waiting |
| 10 | 4.3.2 | RE 1000H | 60d | 2025-10-26 | 2025-12-24 |  |  | waiting |
| 11 | 4.4 | CRE 动态验证 | 6d | 2025-10-26 | 2025-10-31 | 7 | 100% | done |
| 12 | 4.5 | Bench test | 6d | 2025-10-26 | 2025-10-31 | 7 |  |  |
| 13 | 5 | **验证Vth & CP/system Idsat** | 54d | 2025-10-17 | 2025-12-09 |  | 2% |  |
| 14 | 5.1 | wafer寄出 | 1d | 2025-10-17 | 2025-10-17 |  | 100% | done |
| 15 | 5.2 | Assemby | 29d | 2025-10-18 | 2025-11-15 | 14 |  |  |
| 16 | 5.3 | 蓝膜样品准备 | 30d | 2025-11-10 | 2025-12-09 | 9 |  | waiting |
| 17 | 6 | **2nd 改版 device lot** | 56d | 2025-11-12 | 2026-01-06 |  |  |  |
| 18 | 6.1 | Wafer Process | 24d | 2025-11-12 | 2025-12-05 |  |  |  |
| 19 | 6.2 | Assembly | 25d | 2025-12-06 | 2025-12-30 | 18 |  | waiting |
| 20 | 6.3 | 动态验证 | 7d | 2025-12-31 | 2026-01-06 | 19 |  | waiting |
